# Short Film Project

Schedule from MS Project, 2005-03-07 to 2005-12-22, costs in $.

## Calendars

- Standard: Mon-Fri 08:00-12:00, 13:00-17:00; Sat-Sun off.
- Evening Shoot: Mon-Fri 17:00-23:00; Sat-Sun off.
- Night Shift: Mon 23:00-24:00; Tue-Fri 00:00-03:00, 04:00-08:00, 23:00-24:00; Sat 00:00-03:00, 04:00-08:00; Sun off.

## Resources

| Resource | Group | Unit | Rate | Cost per use |
| --- | --- | --- | --- | --- |
| 16-mm Camera | Equipment |  | 6.25 |  |
| 16-mm Film | Film and Lab | 100 Feet | 20 |  |
| 500-Watt Light | Equipment |  | 2.5 |  |
| Anne L. Paper | Talent |  | 9.38 |  |
| Camera Boom | Equipment |  |  |  |
| Clair Hector | Production |  | 20 |  |
| Crane | Equipment |  |  |  |
| Daniel Penn | Talent |  | 9.38 |  |
| David Campbell | Talent |  | 9.38 |  |
| Dolly | Equipment |  |  |  |
| Doug Hampton | Production |  | 13 |  |
| Editing Lab | Film and Lab |  | 25 | 25 |
| Electrician | Crew |  | 22 |  |
| Eric Lang | Production |  | 15.5 |  |
| Eric Miller | Talent |  | 9.38 |  |
| Florian Voss | Production |  | 22 |  |
| Frank Lee | Crew |  | 14 |  |
| Jan Miksovsky | Production |  | 18.75 |  |
| Jim Hance | Talent |  | 9.38 |  |
| Jo Brown | Production |  | 18.75 |  |
| Johnathan Perrera | Production |  | 22 |  |
| Joseph Matthews | Talent |  | 9.38 |  |
| Joshua Randall | Talent |  | 12 |  |
| Kathryn Wilson | Production |  | 5 | 100 |
| Keith Harris | Crew |  | 14 |  |
| Kim Yoshida | Production |  | 9.4 |  |
| Linda Kobara | Production |  | 24 |  |
| Lisa Garmaise | Production |  | 9 |  |
| Mark Hassall | Production |  | 23.75 |  |
| Max Benson | Crew |  | 24 |  |
| Megan Sherman | Crew |  | 18 |  |
| Michael Patten | Production |  | 17.5 |  |
| Pat Kirtland | Production |  | 5.62 |  |
| Paul Borm | Production |  | 25 |  |
| Reflector Kit | Equipment |  |  |  |
| Richard Lum | Production |  | 15.62 |  |
| Salman Mughal | Production |  | 18 |  |
| Scott Cooper | Production |  | 19.37 |  |
| Sue Jackson | Talent |  | 9.38 |  |
| Ted Bremer | Crew |  | 14 |  |
| Tim O'Brien | Crew |  | 14 |  |

## Schedule

| ID | WBS | Task | Type | Duration | Start | Finish | Predecessors | Baseline start | Baseline finish | Baseline duration | Total slack | Free slack | Constraint | Deadline | Calendar | Resources | Work | Cost | Baseline cost | Text9 | Text10 |
| --- | --- | --- | --- | --- | --- | --- | --- | --- | --- | --- | --- | --- | --- | --- | --- | --- | --- | --- | --- | --- | --- |
| 1 | 1 | **Pre-Production** |  | 59.5d | 2005-03-07 | 2005-05-27 |  | 2005-03-07 | 2005-05-25 | 57.5d | 0.5d | 0d |  |  |  |  | 1256h | 23,794 | 24,166 |  |  |
| 2 | 1.1 | Review script |  | 1w | 2005-03-07 | 2005-03-11 |  | 2005-03-07 | 2005-03-11 | 1w | 0.5d | 0d |  |  |  | Scott Cooper [50%]; Clair Hector | 48h | 947.5 | 947.5 |  |  |
| 3 | 1.2 | Develop script breakdown and schedule |  | 1.05w | 2005-03-14 | 2005-03-21 | 2 | 2005-03-14 | 2005-03-18 | 1w | 0.5d | 0d |  |  |  | Scott Cooper; Johnathan Perrera; Clair Hector | 120h | 2,455 | 2,455 |  |  |
| 4 | 1.3 | Develop production boards |  | 1.05mo | 2005-03-21 | 2005-04-21 | 3 | 2005-03-21 | 2005-04-19 | 1mo | 0.5d | 0d |  |  |  | Scott Cooper; Kim Yoshida; Johnathan Perrera | 480h | 8,124 | 8,124 |  |  |
| 5 | 1.4 | Scout locations |  | 2w | 2005-04-21 | 2005-05-05 | 4 | 2005-04-20 | 2005-05-03 | 2w | 0.5d | 0d |  |  |  | Jo Brown; Jan Miksovsky; Max Benson | 240h | 4,920 | 4,920 |  |  |
| 6 | 1.5 | Select locations |  | 1.05w | 2005-05-05 | 2005-05-12 | 5 | 2005-05-04 | 2005-05-10 | 1w | 0.5d | 0d |  |  |  | Scott Cooper; Clair Hector; Max Benson | 120h | 2,535 | 2,535 |  |  |
| 7 | 1.6 | Hold auditions |  | 1.05w | 2005-05-12 | 2005-05-19 | 6 | 2005-05-11 | 2005-05-17 | 1w | 0.5d | 0d |  |  |  | Clair Hector; Scott Cooper; Doug Hampton [50%] | 100h | 1,887 | 1,887 |  |  |
| 8 | 1.7 | Apply for filming permits |  | 1w | 2005-05-20 | 2005-05-26 | 7 | 2005-05-18 | 2005-05-24 | 1w | 0.5d | 0d |  |  |  | Kim Yoshida | 40h | 876 | 876 |  |  |
| 9 | 1.8 | Reserve camera equipment |  | 3d | 2005-05-24 | 2005-05-27 | 8FS-5% | 2005-05-20 | 2005-05-25 | 3d | 0.5d | 0d |  |  |  | Jan Miksovsky; Eric Lang [50%] | 36h | 636 | 822 |  |  |
| 10 | 1.9 | Reserve sound equipment |  | 3d | 2005-05-24 | 2005-05-27 | 9SS | 2005-05-20 | 2005-05-25 | 3d | 0.5d | 0d |  |  |  | Eric Lang [50%] | 12h | 186 | 372 |  |  |
| 11 | 1.10 | Pre-Production complete! | milestone | 0d | 2005-05-27 | 2005-05-27 | 10 | 2005-05-25 | 2005-05-25 | 0d | 0.5d |  |  | 2005-05-27 |  |  |  |  |  |  |  |
| 12 | 1.11 | **Staff planning meeting** |  | 45.25d | 2005-03-14 | 2005-05-16 |  | 2005-03-14 | 2005-05-16 | 45.25d | 10d |  |  |  |  |  | 60h | 1,227.5 | 1,227.5 |  |  |
| 13 | 1.11.1 | Staff planning meeting 1 |  | 2h | 2005-03-14 | 2005-03-14 |  | 2005-03-14 | 2005-03-14 | 2h | 53d |  | start no earlier than 2005-03-14 |  |  | Clair Hector; Johnathan Perrera; Scott Cooper | 6h | 122.75 | 122.75 |  |  |
| 14 | 1.11.2 | Staff planning meeting 2 |  | 2h | 2005-03-21 | 2005-03-21 |  | 2005-03-21 | 2005-03-21 | 2h | 48d |  | start no earlier than 2005-03-21 |  |  | Clair Hector; Johnathan Perrera; Scott Cooper | 6h | 122.75 | 122.75 |  |  |
| 15 | 1.11.3 | Staff planning meeting 3 |  | 2h | 2005-03-28 | 2005-03-28 |  | 2005-03-28 | 2005-03-28 | 2h | 43d |  | start no earlier than 2005-03-28 |  |  | Clair Hector; Johnathan Perrera; Scott Cooper | 6h | 122.75 | 122.75 |  |  |
| 16 | 1.11.4 | Staff planning meeting 4 |  | 2h | 2005-04-04 | 2005-04-04 |  | 2005-04-04 | 2005-04-04 | 2h | 38d |  | start no earlier than 2005-04-04 |  |  | Clair Hector; Johnathan Perrera; Scott Cooper | 6h | 122.75 | 122.75 |  |  |
| 17 | 1.11.5 | Staff planning meeting 5 |  | 2h | 2005-04-11 | 2005-04-11 |  | 2005-04-11 | 2005-04-11 | 2h | 33d |  | start no earlier than 2005-04-11 |  |  | Clair Hector; Johnathan Perrera; Scott Cooper | 6h | 122.75 | 122.75 |  |  |
| 18 | 1.11.6 | Staff planning meeting 6 |  | 2h | 2005-04-18 | 2005-04-18 |  | 2005-04-18 | 2005-04-18 | 2h | 28d |  | start no earlier than 2005-04-18 |  |  | Clair Hector; Johnathan Perrera; Scott Cooper | 6h | 122.75 | 122.75 |  |  |
| 19 | 1.11.7 | Staff planning meeting 7 |  | 2h | 2005-04-25 | 2005-04-25 |  | 2005-04-25 | 2005-04-25 | 2h | 23d |  | start no earlier than 2005-04-25 |  |  | Clair Hector; Johnathan Perrera; Scott Cooper | 6h | 122.75 | 122.75 |  |  |
| 20 | 1.11.8 | Staff planning meeting 8 |  | 2h | 2005-05-02 | 2005-05-02 |  | 2005-05-02 | 2005-05-02 | 2h | 18d |  | start no earlier than 2005-05-02 |  |  | Clair Hector; Johnathan Perrera; Scott Cooper | 6h | 122.75 | 122.75 |  |  |
| 21 | 1.11.9 | Staff planning meeting 9 |  | 2h | 2005-05-09 | 2005-05-09 |  | 2005-05-09 | 2005-05-09 | 2h | 13d |  | start no earlier than 2005-05-09 |  |  | Clair Hector; Johnathan Perrera; Scott Cooper | 6h | 122.75 | 122.75 |  |  |
| 22 | 1.11.10 | Staff planning meeting 10 |  | 2h | 2005-05-16 | 2005-05-16 |  | 2005-05-16 | 2005-05-16 | 2h | 8d |  | start no earlier than 2005-05-16 |  |  | Clair Hector; Johnathan Perrera; Scott Cooper | 6h | 122.75 | 122.75 |  |  |
| 23 | 2 | **Production** |  | 48.5d | 2005-05-27 | 2005-08-04 | 1 | 2005-05-25 | 2005-08-02 | 48.5d | 0d |  |  | 2005-08-19 |  |  | 2188h | 36,380.95 | 36,380.95 |  |  |
| 24 | 2.1 | **Scene 7** |  | 4.5d | 2005-05-27 | 2005-06-03 |  | 2005-05-25 | 2005-06-01 | 4.5d | 0d |  |  |  |  |  | 215h | 3,702.5 | 3,702.5 |  |  |
| 25 | 2.1.1 | Scene 7 setup |  | 6h | 2005-05-27 | 2005-05-30 |  | 2005-05-25 | 2005-05-26 | 6h | 0.75d | 0d |  |  |  | Jo Brown; Max Benson; Electrician [50%] | 15h | 322.5 | 322.5 |  |  |
| 26 | 2.1.2 | Scene 7 rehearsal |  | 8h | 2005-05-30 | 2005-05-31 | 25 | 2005-05-26 | 2005-05-27 | 8h | 0.75d | 0d |  |  |  | Scott Cooper; Jo Brown; Paul Borm [50%]; Joseph Matthews; Sue Jackson; Jan Miksovsky | 44h | 705 | 705 |  |  |
| 27 | 2.1.3 | Scene 7 shoot |  | 8h | 2005-05-31 | 2005-06-01 | 26 | 2005-05-27 | 2005-05-30 | 8h | 0.75d | 0d |  |  |  | Scott Cooper; Jo Brown; Joseph Matthews; Sue Jackson; Frank Lee; Keith Harris; Ted Bremer; 16-mm Camera [300%]; 500-Watt Light [200%]; Joshua Randall; Megan Sherman; Tim O'Brien; Jan Miksovsky; Camera Boom; 16-mm Film [5 100 Feet] | 136h | 2,245 | 2,245 | Richard, Store clerk #1, Store clerk #2 | Grocery store |
| 28 | 2.1.4 | Scene 7 teardown |  | 8h | 2005-06-01 | 2005-06-02 | 27 | 2005-05-30 | 2005-05-31 | 8h | 0.75d |  |  |  |  | Jo Brown; Max Benson; Electrician [50%] | 20h | 430 | 430 |  |  |
| 29 | 2.1.5 | Scene 7-process dailies |  | 1d | 2005-06-02 | 2005-06-03 | 28 | 2005-05-31 | 2005-06-01 | 1d | 0d |  |  |  | Night Shift |  |  |  |  |  |  |

| ID | WBS | Task | Duration | Start | Finish | Predecessors | Baseline start | Baseline finish | Baseline duration | Total slack | Free slack | Constraint | Calendar | Resources | Work | Cost | Baseline cost | Text9 | Text10 |
| --- | --- | --- | --- | --- | --- | --- | --- | --- | --- | --- | --- | --- | --- | --- | --- | --- | --- | --- | --- |
| 30 | 2.2 | **Scene 3** | 4d | 2005-06-03 | 2005-06-08 | 24 | 2005-06-01 | 2005-06-06 | 4d | 0d |  |  |  |  | 268h | 4,180.4 | 4,180.4 |  |  |
| 31 | 2.2.1 | Scene 3 setup | 1d | 2005-06-03 | 2005-06-03 |  | 2005-06-01 | 2005-06-01 | 1d | 0d |  | start no earlier than 2004-05-24 |  | Jo Brown; Max Benson; Electrician | 24h | 518 | 518 |  |  |
| 32 | 2.2.2 | Scene 3 rehearsal | 1d | 2005-06-06 | 2005-06-06 | 31 | 2005-06-02 | 2005-06-02 | 1d | 0d |  |  |  | Scott Cooper; Jo Brown; Eric Miller; Jim Hance; Anne L. Paper; Joseph Matthews; Jan Miksovsky | 56h | 755 | 755 |  |  |
| 33 | 2.2.3 | Scene 3 shoot | 8h | 2005-06-07 | 2005-06-07 | 32 | 2005-06-03 | 2005-06-03 | 8h | 0d |  |  |  | Scott Cooper; Jo Brown; Eric Miller; Jim Hance; Anne L. Paper; Joseph Matthews; Tim O'Brien; Megan Sherman; Doug Hampton [50%]; Keith Harris; 16-mm Camera [200%]; 500-Watt Light [400%]; Dolly; Frank Lee; Jan Miksovsky; Ted Bremer; Camera Boom; 16-mm Film [5 100 Feet] | 164h | 2,389.4 | 2,389.4 | Man on street, Richard | Street corner |
| 34 | 2.2.4 | Scene 3 teardown | 1d | 2005-06-08 | 2005-06-08 | 33 | 2005-06-06 | 2005-06-06 | 1d | 0d |  |  |  | Jo Brown; Max Benson; Electrician | 24h | 518 | 518 |  |  |
| 35 | 2.2.5 | Scene 3-process dailies | 1d | 2005-06-07 | 2005-06-08 | 33 | 2005-06-03 | 2005-06-04 | 1d | 1d |  |  | Night Shift |  |  |  |  |  |  |
| 36 | 2.3 | **Scene 1** | 6d | 2005-06-09 | 2005-06-16 | 30 | 2005-06-07 | 2005-06-14 | 6d | 0d |  |  |  |  | 324h | 5,960.4 | 5,960.4 |  |  |
| 37 | 2.3.1 | Scene 1 setup | 3d | 2005-06-09 | 2005-06-13 |  | 2005-06-07 | 2005-06-09 | 3d | 0d |  |  |  | Jo Brown; Max Benson; Electrician [200%] | 96h | 2,082 | 2,082 |  |  |
| 38 | 2.3.2 | Scene 1 rehearsal | 1d | 2005-06-14 | 2005-06-14 | 37 | 2005-06-10 | 2005-06-10 | 1d | 0d |  |  |  | Scott Cooper; Jo Brown; Paul Borm [50%]; David Campbell; Eric Miller; Sue Jackson; Jan Miksovsky | 52h | 780 | 780 |  |  |
| 39 | 2.3.3 | Scene 1 shoot | 8h | 2005-06-15 | 2005-06-15 | 38 | 2005-06-13 | 2005-06-13 | 8h | 0d |  |  |  | Scott Cooper; Jo Brown; Paul Borm [50%]; David Campbell; Eric Miller; Sue Jackson; Tim O'Brien; Frank Lee; Megan Sherman; Doug Hampton [50%]; Keith Harris; Ted Bremer; 16-mm Camera [300%]; 500-Watt Light; Jan Miksovsky; Dolly; Camera Boom; 16-mm Film [5 100 Feet] | 144h | 2,404.4 | 2,404.4 | Garth, Man on street, Store clerk #1 | Street corner |
| 40 | 2.3.4 | Scene 1 teardown | 1d | 2005-06-16 | 2005-06-16 | 39 | 2005-06-14 | 2005-06-14 | 1d | 0d |  |  |  | Jo Brown; Max Benson; Electrician [200%] | 32h | 694 | 694 |  |  |
| 41 | 2.3.5 | Scene 1-process dailies | 1d | 2005-06-15 | 2005-06-16 | 39 | 2005-06-13 | 2005-06-14 | 1d | 1d |  |  | Night Shift |  |  |  |  |  |  |
| 42 | 2.4 | **Scene 2** | 3d | 2005-06-17 | 2005-06-22 | 36 | 2005-06-15 | 2005-06-18 | 3d | 0d |  |  |  |  | 138h | 2,257.1 | 2,257.1 |  |  |
| 43 | 2.4.1 | Scene 2 setup | 1d | 2005-06-17 | 2005-06-17 |  | 2005-06-15 | 2005-06-15 | 1d | 0d |  |  |  | Jo Brown; Max Benson; Electrician | 24h | 518 | 518 |  |  |
| 44 | 2.4.2 | Scene 2 rehearsal | 8h | 2005-06-20 | 2005-06-20 | 43 | 2005-06-16 | 2005-06-16 | 8h | 0d |  |  |  | Scott Cooper; Doug Hampton [50%]; David Campbell; Anne L. Paper; Jan Miksovsky | 36h | 517.4 | 517.4 |  |  |
| 45 | 2.4.3 | Scene 2 shoot | 4h | 2005-06-20 | 2005-06-20 | 44 | 2005-06-16 | 2005-06-16 | 4h | 0.25d | 0d |  | Evening Shoot | Scott Cooper; Doug Hampton [50%]; Anne L. Paper; Tim O'Brien; Frank Lee; Keith Harris; Ted Bremer; 16-mm Camera [200%]; 500-Watt Light [300%]; Jan Miksovsky; David Campbell; Camera Boom; Crane; Dolly; 16-mm Film [5 100 Feet] | 66h | 962.7 | 962.7 | Garth, Shelly | Shelly's living room |
| 46 | 2.4.4 | Scene 2 teardown | 0.5d | 2005-06-21 | 2005-06-21 | 45 | 2005-06-17 | 2005-06-17 | 0.5d | 0.5d |  |  |  | Jo Brown; Max Benson; Electrician | 12h | 259 | 259 |  |  |
| 47 | 2.4.5 | Scene 2-process dailies | 1d | 2005-06-21 | 2005-06-22 | 46 | 2005-06-17 | 2005-06-18 | 1d | 0d |  |  | Night Shift |  |  |  |  |  |  |
| 48 | 2.5 | **Scene 5** | 6d | 2005-06-22 | 2005-06-29 | 42 | 2005-06-20 | 2005-06-27 | 6d | 0.5d | 0d |  |  |  | 288h | 4,547.4 | 4,547.4 |  |  |
| 49 | 2.5.1 | Scene 5 setup | 3d | 2005-06-22 | 2005-06-24 |  | 2005-06-20 | 2005-06-22 | 3d | 0.5d | 0d |  |  | Jo Brown; Max Benson | 48h | 1,026 | 1,026 |  |  |
| 50 | 2.5.2 | Scene 5 rehearsal | 1d | 2005-06-27 | 2005-06-27 | 49 | 2005-06-23 | 2005-06-23 | 1d | 0.5d | 0d |  |  | Scott Cooper; Jo Brown; Eric Miller; David Campbell; Sue Jackson; Daniel Penn; Anne L. Paper; Jan Miksovsky [50%] | 60h | 755 | 755 |  |  |
| 51 | 2.5.3 | Scene 5 shoot | 8h | 2005-06-28 | 2005-06-28 | 50 | 2005-06-24 | 2005-06-24 | 8h | 0.5d | 0d |  |  | Scott Cooper; Jo Brown; Eric Miller; David Campbell; Sue Jackson; Daniel Penn; Anne L. Paper; Tim O'Brien; Frank Lee; Megan Sherman; Doug Hampton [50%]; Keith Harris; Ted Bremer; 16-mm Camera [200%]; 500-Watt Light [200%]; Crane; Jan Miksovsky; Camera Boom; Dolly; 16-mm Film [5 100 Feet] | 164h | 2,424.4 | 2,424.4 | Man on street, Garth, Old man, Shelly | Street corner |
| 52 | 2.5.4 | Scene 5 teardown | 1d | 2005-06-29 | 2005-06-29 | 51 | 2005-06-27 | 2005-06-27 | 1d | 0.5d |  |  |  | Jo Brown; Max Benson | 16h | 342 | 342 |  |  |
| 53 | 2.5.5 | Scene 5-process dailies | 1d | 2005-06-28 | 2005-06-29 | 51 | 2005-06-24 | 2005-06-25 | 1d | 1d |  |  | Night Shift |  |  |  |  |  |  |

Notes:
- 31: This scene must be shot after 5/24 due to limited access to site

| ID | WBS | Task | Duration | Start | Finish | Predecessors | Baseline start | Baseline finish | Baseline duration | Total slack | Free slack | Calendar | Resources | Work | Cost | Baseline cost | Text9 | Text10 |
| --- | --- | --- | --- | --- | --- | --- | --- | --- | --- | --- | --- | --- | --- | --- | --- | --- | --- | --- |
| 54 | 2.6 | **Scene 6** | 13d | 2005-06-30 | 2005-07-19 | 48 | 2005-06-28 | 2005-07-15 | 13d | 0d |  |  |  | 544h | 8,723.4 | 8,723.4 |  |  |
| 55 | 2.6.1 | Scene 6 setup | 6d | 2005-06-30 | 2005-07-07 |  | 2005-06-28 | 2005-07-05 | 6d | 0.5d | 0d |  | Jo Brown; Max Benson | 96h | 2,052 | 2,052 |  |  |
| 56 | 2.6.2 | Scene 6 rehearsal | 2d | 2005-07-08 | 2005-07-11 | 55 | 2005-07-06 | 2005-07-07 | 2d | 0.5d | 0d |  | Scott Cooper; Jo Brown; Doug Hampton [50%]; Paul Borm [50%]; David Campbell; Sue Jackson; Anne L. Paper; Jim Hance; Daniel Penn; Jan Miksovsky [50%] | 136h | 1,834.8 | 1,834.8 |  |  |
| 57 | 2.6.3 | Scene 6 shoot | 1.5d | 2005-07-12 | 2005-07-13 | 56 | 2005-07-08 | 2005-07-11 | 1.5d | 0.5d | 0d |  | Scott Cooper; Jo Brown; Doug Hampton [50%]; Paul Borm [50%]; David Campbell; Sue Jackson; Anne L. Paper; Jim Hance; Daniel Penn; Frank Lee; Megan Sherman; Keith Harris; Ted Bremer; 16-mm Camera [300%]; 500-Watt Light [300%]; Dolly; Crane; Joshua Randall; Tim O'Brien; 16-mm Film [5 100 Feet] | 264h | 3,810.6 | 3,810.6 | Garth, Store Clerk #1, Shelly, Old man | Grocery store |
| 58 | 2.6.4 | Scene 6 teardown | 3d | 2005-07-13 | 2005-07-18 | 57 | 2005-07-11 | 2005-07-14 | 3d | 0.5d |  |  | Jo Brown; Max Benson | 48h | 1,026 | 1,026 |  |  |
| 59 | 2.6.5 | Scene 6-process dailies | 1d | 2005-07-18 | 2005-07-19 | 58 | 2005-07-14 | 2005-07-15 | 1d | 0d |  | Night Shift |  |  |  |  |  |  |
| 60 | 2.7 | **Scene 8** | 8d | 2005-07-19 | 2005-07-29 | 54 | 2005-07-15 | 2005-07-27 | 8d | 0d |  |  |  | 320h | 5,278.2 | 5,278.2 |  |  |
| 61 | 2.7.1 | Scene 8 setup | 3d | 2005-07-19 | 2005-07-21 |  | 2005-07-15 | 2005-07-19 | 3d | 0.5d | 0d |  | Jo Brown; Max Benson | 48h | 1,026 | 1,026 |  |  |
| 62 | 2.7.2 | Scene 8 rehearsal | 2d | 2005-07-22 | 2005-07-25 | 61 | 2005-07-20 | 2005-07-21 | 2d | 0.5d | 0d |  | Scott Cooper; Jo Brown; Doug Hampton [50%]; Paul Borm [50%]; David Campbell; Sue Jackson; Eric Miller; Jan Miksovsky [50%] | 104h | 1,534.8 | 1,534.8 |  |  |
| 63 | 2.7.3 | Scene 8 shoot | 8h | 2005-07-26 | 2005-07-26 | 62 | 2005-07-22 | 2005-07-22 | 8h | 0.5d | 0d |  | Scott Cooper; Jo Brown; Doug Hampton [50%]; Paul Borm [50%]; David Campbell; Sue Jackson; Eric Miller; Tim O'Brien; Frank Lee; Megan Sherman; Keith Harris; Ted Bremer; 16-mm Camera [200%]; 500-Watt Light; Dolly [200%]; Camera Boom; Crane; 16-mm Film [5 100 Feet] | 144h | 2,204.4 | 2,204.4 | Garth, Store clerk #1, Man on street | Street corner |
| 64 | 2.7.4 | Scene 8 teardown | 1.5d | 2005-07-27 | 2005-07-28 | 63 | 2005-07-25 | 2005-07-26 | 1.5d | 0.5d |  |  | Jo Brown; Max Benson | 24h | 513 | 513 |  |  |
| 65 | 2.7.5 | Scene 8-process dailies | 1d | 2005-07-28 | 2005-07-29 | 64 | 2005-07-26 | 2005-07-27 | 1d | 0d |  | Night Shift |  |  |  |  |  |  |
| 66 | 2.8 | **Scene 4** | 4d | 2005-07-29 | 2005-08-04 | 60 | 2005-07-27 | 2005-08-02 | 4d | 0d |  |  |  | 91h | 1,731.55 | 1,731.55 |  |  |
| 67 | 2.8.1 | Scene 4 setup | 1.5d | 2005-07-29 | 2005-08-01 |  | 2005-07-27 | 2005-07-28 | 1.5d | 0.25d | 0d |  | Jo Brown; Max Benson | 24h | 513 | 513 |  |  |
| 68 | 2.8.2 | Scene 4 rehearsal | 4h | 2005-08-01 | 2005-08-01 | 67 | 2005-07-28 | 2005-07-28 | 4h | 0.25d | 0d |  | Scott Cooper; Doug Hampton [50%]; Anne L. Paper; Joseph Matthews; Jan Miksovsky [50%] | 16h | 221.2 | 221.2 |  |  |
| 69 | 2.8.3 | Scene 4 shoot | 2h | 2005-08-02 | 2005-08-02 | 68 | 2005-07-29 | 2005-07-29 | 2h | 0.25d | 0d |  | Scott Cooper; Doug Hampton [50%]; Anne L. Paper; Joseph Matthews; Frank Lee; Megan Sherman; Keith Harris; 16-mm Camera [200%]; 500-Watt Light [200%]; Jan Miksovsky; Ted Bremer; Camera Boom; 16-mm Film [5 100 Feet] | 27h | 484.35 | 484.35 | Shelly, Richard | Elevator |
| 70 | 2.8.4 | Scene 4 teardown | 1.5d | 2005-08-02 | 2005-08-03 | 69 | 2005-07-29 | 2005-08-01 | 1.5d | 0.25d |  |  | Jo Brown; Max Benson | 24h | 513 | 513 |  |  |
| 71 | 2.8.5 | Scene 4-process dailies | 1d | 2005-08-03 | 2005-08-04 | 70 | 2005-08-01 | 2005-08-02 | 1d | 0d |  | Night Shift |  |  |  |  |  |  |
| 72 | 3 | **Post-Production** | 100.5d | 2005-08-04 | 2005-12-22 | 23 | 2005-08-02 | 2005-12-20 | 100.5d | 0d |  |  |  | 1726h | 28,467.9 | 28,467.9 |  |  |
| 73 | 3.1 | Log footage | 8.5d | 2005-08-04 | 2005-08-16 |  | 2005-08-02 | 2005-08-12 | 8.5d | 0d |  |  | Editing Lab; Florian Voss | 136h | 3,221 | 3,221 |  |  |
| 74 | 3.2 | Record rough narration | 12d | 2005-08-16 | 2005-09-01 | 73 | 2005-08-12 | 2005-08-30 | 12d | 0d |  |  | David Campbell; Michael Patten | 192h | 2,580 | 2,580 |  |  |
| 75 | 3.3 | Paper edit footage | 10d | 2005-09-01 | 2005-09-15 | 74 | 2005-08-30 | 2005-09-13 | 10d | 0d |  |  | Clair Hector; Kim Yoshida; Lisa Garmaise; Richard Lum | 320h | 4,322 | 4,322 |  |  |
| 76 | 3.4 | Rough cut edit | 5d | 2005-09-15 | 2005-09-22 | 75 | 2005-09-13 | 2005-09-20 | 5d | 0d |  |  | Clair Hector; Richard Lum | 80h | 1,425 | 1,425 |  |  |
| 77 | 3.5 | Fine cut edit | 10d | 2005-09-22 | 2005-10-06 | 76 | 2005-09-20 | 2005-10-04 | 10d | 0d |  |  | Clair Hector; Richard Lum; Lisa Garmaise; Kim Yoshida; Editing Lab | 400h | 6,347 | 6,347 |  |  |
| 78 | 3.6 | Hold formal approval showing | 1d | 2005-10-06 | 2005-10-07 | 77 | 2005-10-04 | 2005-10-05 | 1d | 0d |  |  | Clair Hector; Jo Brown; Mark Hassall [50%]; Scott Cooper [50%] | 24h | 482.5 | 482.5 |  |  |
| 79 | 3.7 | Record final narration | 15d | 2005-10-07 | 2005-10-28 | 78 | 2005-10-05 | 2005-10-26 | 15d | 0d |  |  | David Campbell; Michael Patten; Scott Cooper | 216h | 3,330 | 3,330 |  |  |
| 80 | 3.8 | Add head and tail titles | 1w | 2005-10-28 | 2005-11-04 | 79 | 2005-10-26 | 2005-11-02 | 1w | 0d |  |  | Jo Brown; Michael Patten; Editing Lab | 120h | 2,475 | 2,475 |  |  |
| 81 | 3.9 | Add final music | 16d | 2005-11-04 | 2005-11-28 | 80 | 2005-11-02 | 2005-11-24 | 16d | 0d |  |  | Michael Patten | 128h | 2,240 | 2,240 |  |  |
| 82 | 3.10 | Print internegative of film | 3d | 2005-11-28 | 2005-12-01 | 81 | 2005-11-24 | 2005-11-29 | 3d | 0d |  |  | Florian Voss | 24h | 528 | 528 |  |  |
| 83 | 3.11 | Clone dubbing masters of audio tape | 12d | 2005-12-01 | 2005-12-19 | 82 | 2005-11-29 | 2005-12-15 | 12d | 0d |  |  | Doug Hampton [50%] | 48h | 748.8 | 748.8 |  |  |
| 84 | 3.12 | Archive master film and audio tape | 2d | 2005-12-19 | 2005-12-21 | 83 | 2005-12-15 | 2005-12-19 | 2d | 0d |  |  | Doug Hampton [50%]; Editing Lab; Michael Patten | 30h | 628.6 | 628.6 |  |  |
| 85 | 3.13 | Hand off masters to distributor | 1d | 2005-12-21 | 2005-12-22 | 84 | 2005-12-19 | 2005-12-20 | 1d | 0d |  |  | Michael Patten | 8h | 140 | 140 |  |  |
